# SDK 4.0

Schedule from MS Project, 2007-01-19 to 2007-07-24, A marks actual dates.
NCI

## Calendars

- Standard: Mon-Fri 08:00-12:00, 13:00-17:00; Sat-Sun off. Exceptions (off unless hours are given): 2007-02-05 to 2007-02-07, 2007-07-04.

## Resources

| Resource |
| --- |
| Satish |
| Dan |
| Charles |
| Avinash |
| Steve |
| Kunal |
| Doug |
| Satish/Kunal |
| Dan/Kunal |
| Ye |
| C |

## Schedule

| ID | WBS | Task | Type | Duration | Start | Finish | Predecessors | Complete | Remaining | Total slack | Free slack | Constraint | Resources | Work | Actual work |
| --- | --- | --- | --- | --- | --- | --- | --- | --- | --- | --- | --- | --- | --- | --- | --- |
| 1 | 1 | **caCORE SDK v4.0** |  | 129d? | 2007-01-19 A | 2007-07-24 |  | 20% | 103.09d? | 0d |  |  |  | 1400h | 456h |
| 2 | 1.1 | **Inception** |  | 3d | 2007-01-19 A | 2007-01-23 A |  | 100% |  |  |  |  |  | 8h | 8h |
| 3 | 1.1.1 | 4.0 Kickoff meeting | milestone | 0d | 2007-01-19 A | 2007-01-19 A |  | 100% |  |  |  | start no earlier than 2007-01-19 | Satish; Charles; Dan; Steve |  |  |
| 4 | 1.1.2 | Create initial task plan |  | 1d | 2007-01-23 A | 2007-01-23 A |  | 100% |  |  |  |  | Satish | 8h | 8h |
| 5 | 1.2 | **Eloboration** |  | 13d | 2007-01-23 A | 2007-02-13 |  | 91% | 1.19d | 114d |  |  |  | 246h | 226.8h |
| 6 | 1.2.1 | **Requiements meetings** |  | 6.25d | 2007-01-23 A | 2007-01-31 A |  | 100% |  |  |  |  |  | 78h | 78h |
| 7 | 1.2.1.1 | Requirements meeting (CGEMS, Rambrandt) |  | 0.25d | 2007-01-29 A | 2007-01-29 A |  | 100% |  |  |  | start no earlier than 2007-01-29 | Satish; Dan; Steve | 6h | 6h |
| 8 | 1.2.1.2 | Requirements Meeting (caCORE API) |  | 0.25d | 2007-01-23 A | 2007-01-23 A |  | 100% |  |  |  |  | Satish; Dan; Steve | 6h | 6h |
| 9 | 1.2.1.3 | Requirements meeting (caAdapter) |  | 0.25d | 2007-01-30 A | 2007-01-30 A |  | 100% |  |  |  | start no earlier than 2007-01-30 | Satish; Dan; Steve | 6h | 6h |
| 10 | 1.2.1.4 | Requirements meeting (caDSR) |  | 0.25d | 2007-01-30 A | 2007-01-30 A |  | 100% |  |  |  | start no earlier than 2007-01-30 | Satish; Dan; Steve | 6h | 6h |
| 11 | 1.2.1.5 | Requirements meeting (caGRID) |  | 0.25d | 2007-01-31 A | 2007-01-31 A |  | 100% |  |  |  | start no earlier than 2007-01-31 | Satish; Dan; Steve | 6h | 6h |
| 12 | 1.2.1.6 | Requirements meeting (other teams) |  | 2d | 2007-01-29 A | 2007-01-30 A |  | 100% |  |  |  | start no earlier than 2007-01-29 | Satish; Dan; Steve | 48h | 48h |
| 13 | 1.2.2 | **Scope Document** |  | 10d | 2007-01-26 A | 2007-02-13 |  | 95% | 0.5d | 114d |  |  |  | 88h | 83.2h |
| 14 | 1.2.2.1 | Prepare list of scope items on gforge |  | 1d | 2007-01-26 A | 2007-01-26 |  | 80% | 0.2d | 44.35d | 0d | start no earlier than 2007-01-26 | Satish | 8h | 6.4h |
| 15 | 1.2.2.2 | Draft scope document |  | 3d | 2007-01-29 A | 2007-01-31 A | 14 | 100% |  |  |  |  | Charles | 24h | 24h |
| 16 | 1.2.2.3 | Estimate LOE for Iteration 1 - 3 scope items |  | 1d | 2007-02-01 A | 2007-02-01 A | 15 | 100% |  |  |  |  | Satish | 8h | 8h |
| 17 | 1.2.2.4 | Prepare risk list |  | 1d | 2007-02-02 A | 2007-02-02 | 16 | 90% | 0.1d | 118d |  |  | Charles; Satish | 16h | 14.4h |
| 18 | 1.2.2.5 | NCICB Review of scope document |  | 3d | 2007-02-08 A | 2007-02-12 A | 17 | 100% |  |  |  |  | Avinash | 24h | 24h |
| 19 | 1.2.2.6 | Revise scope document |  | 1d | 2007-02-13 A | 2007-02-13 | 18 | 80% | 0.2d | 114d |  |  | Charles | 8h | 6.4h |
| 20 | 1.2.3 | **QA Actvities** |  | 7d | 2007-01-23 A | 2007-01-31 |  | 80% | 1.4d | 120d |  |  |  | 72h | 57.6h |
| 21 | 1.2.3.1 | Setup QA repository | milestone | 0d | 2007-01-23 A | 2007-01-23 A |  | 100% |  |  |  |  | Steve |  |  |
| 22 | 1.2.3.2 | Modify Unit test cases and data |  | 5d | 2007-01-23 A | 2007-01-29 | 21 | 80% | 1d | 121.6d | 0d |  | Steve | 40h | 32h |
| 23 | 1.2.3.3 | Validate test case |  | 2d | 2007-01-30 A | 2007-01-31 | 22 | 80% | 0.4d | 120d |  |  | Steve; Satish | 32h | 25.6h |
| 24 | 1.2.4 | Revise task plan |  | 0.5d | 2007-01-23 A | 2007-01-23 A |  | 100% |  |  |  |  | Charles; Satish | 8h | 8h |

| ID | WBS | Task | Duration | Start | Finish | Predecessors | Complete | Remaining | Total slack | Free slack | Constraint | Resources | Work | Actual work |
| --- | --- | --- | --- | --- | --- | --- | --- | --- | --- | --- | --- | --- | --- | --- |
| 25 | 1.3 | **Construction** | 122d? | 2007-01-23 A | 2007-07-17 |  | 14% | 104.49d? | 5d |  |  |  | 1146h | 221.2h |
| 26 | 1.3.1 | **Iteration 1** | 29.25d | 2007-01-23 A | 2007-03-08 |  | 46% | 15.77d | 97.75d |  |  |  | 498h | 221.2h |
| 27 | 1.3.1.1 | **SDK 3.2.1 Release** | 14d | 2007-01-23 A | 2007-02-14 A |  | 100% |  |  |  |  |  | 112h | 112h |
| 28 | 1.3.1.1.1 | Integrate new UI | 14d | 2007-01-23 A | 2007-02-14 A |  | 100% |  |  |  |  | Dan | 112h | 112h |
| 29 | 1.3.1.2 | **QA** | 3d | 2007-02-15 A | 2007-02-19 |  | 80% | 0.6d | 103d |  |  |  | 24h | 19.2h |
| 30 | 1.3.1.2.1 | Test new UI | 3d | 2007-02-15 A | 2007-02-19 | 28 | 80% | 0.6d | 103d | 0d |  | Steve | 24h | 19.2h |
| 31 | 1.3.1.3 | **caGrid Integration** | 18.25d | 2007-02-12 A | 2007-03-08 |  | 25% | 13.77d | 97.75d |  |  |  | 362h | 90h |
| 32 | 1.3.1.3.1 | **Support multiple concurrent users on the same ApplicationService** | 8.5d | 2007-02-12 A | 2007-02-22 |  | 76% | 2d | 12d |  |  |  | 80h | 64h |
| 33 | 1.3.1.3.1.1 | Design | 3d | 2007-02-12 A | 2007-02-14 A | 78 | 100% |  |  |  |  | Satish/Kunal | 24h | 24h |
| 34 | 1.3.1.3.1.2 | Prototype | 3d | 2007-02-15 A | 2007-02-19 A | 33 | 100% |  |  |  |  | Satish | 24h | 24h |
| 35 | 1.3.1.3.1.3 | Design Review | 0.5d | 2007-02-20 A | 2007-02-20 A | 34 | 100% |  |  |  |  | Satish; Kunal; Doug; Avinash | 16h | 16h |
| 36 | 1.3.1.3.1.4 | Design Update | 1d | 2007-02-20 | 2007-02-21 | 35 |  |  | 12d | 0d |  | Satish | 8h |  |
| 37 | 1.3.1.3.1.5 | Development | 1d | 2007-02-21 | 2007-02-22 | 36 |  |  | 12d | 0d |  | Satish | 8h |  |
| 38 | 1.3.1.3.2 | Castor related work was performed on SDK 3.1 branch move to SDK 3.2 | 3d | 2007-02-15 A | 2007-02-19 A | 28 | 100% |  |  |  |  | Dan | 24h | 24h |
| 39 | 1.3.1.3.3 | Castor mapping for inheritance defect (GF#4031) | 0.25d | 2007-02-20 A | 2007-02-20 A | 38 | 100% |  |  |  |  | Dan | 2h | 2h |
| 40 | 1.3.1.3.4 | Improved CSM Installation with SDK | 1d | 2007-02-20 | 2007-02-21 | 39 |  |  | 16.75d | 0d |  | Dan | 8h |  |
| 41 | 1.3.1.3.5 | **Performance due to unnecessary nested sub-selects** | 6d | 2007-02-21 | 2007-03-01 |  |  |  | 16.75d |  |  |  | 48h |  |
| 42 | 1.3.1.3.5.1 | Analysis/Development | 6d | 2007-02-21 | 2007-03-01 | 40 |  |  | 16.75d | 0d |  | Dan | 48h |  |
| 43 | 1.3.1.3.6 | **QA** | 12.25d | 2007-02-20 | 2007-03-08 |  |  |  | 14.5d |  |  |  | 120h |  |
| 44 | 1.3.1.3.6.1 | Test Development | 7d | 2007-02-20 | 2007-02-28 | 30 |  |  | 103d |  | start no earlier than 2007-02-14 | Steve | 56h |  |
| 45 | 1.3.1.3.6.2 | Test Execution | 5d | 2007-03-01 | 2007-03-08 | 34, 42 |  |  | 97.75d |  |  | Steve | 40h |  |
| 46 | 1.3.1.3.6.3 | Test Support | 3d | 2007-02-22 | 2007-02-27 | 37 |  |  | 12d | 0d |  | Satish | 24h |  |
| 47 | 1.3.1.3.7 | **Documentation** | 2d | 2007-03-01 | 2007-03-05 |  |  |  | 16.75d | 0d |  |  | 16h |  |
| 48 | 1.3.1.3.7.1 | Update Programmers Guide, Release Notes | 1d | 2007-03-01 | 2007-03-02 | 42 |  |  | 16.75d | 0d |  | Dan | 8h |  |
| 49 | 1.3.1.3.7.2 | Review | 0.5d | 2007-03-02 | 2007-03-02 | 48 |  |  | 16.75d | 0d |  | Dan | 4h |  |
| 50 | 1.3.1.3.7.3 | Final | 0.5d | 2007-03-02 | 2007-03-05 | 49 |  |  | 16.75d | 0d |  | Dan | 4h |  |
| 51 | 1.3.1.3.8 | Release Packaging | 2d | 2007-03-05 | 2007-03-07 | 50 |  |  | 98.75d |  |  | Dan | 16h |  |

| ID | WBS | Task | Type | Duration | Start | Finish | Predecessors | Total slack | Free slack | Constraint | Resources | Work |
| --- | --- | --- | --- | --- | --- | --- | --- | --- | --- | --- | --- | --- |
| 52 | 1.3.1.3.9 | **Iteration Plan** |  | 2d | 2007-03-02 | 2007-03-06 | 48 | 99.75d |  |  |  | 48h |
| 53 | 1.3.1.3.9.1 | Review Client Feature Request/Revise Task Plan |  | 2d | 2007-03-02 | 2007-03-06 |  | 99.75d | 0d |  | Charles; Avinash; Satish | 48h |
| 54 | 1.3.1.4 | 3.2.1 Release Complete | milestone | 0d | 2007-03-06 | 2007-03-06 | 53 | 99.75d |  |  |  |  |
| 55 | 1.3.2 | **Iteration 2** |  | 36d | 2007-02-27 | 2007-04-18 |  | 12d |  |  |  | 452h |
| 56 | 1.3.2.1 | **SDK 4.0 Release** |  | 36d | 2007-02-27 | 2007-04-18 |  | 12d |  |  |  | 452h |
| 57 | 1.3.2.1.1 | **XMI Processor changes** |  | 30d | 2007-02-27 | 2007-04-10 |  | 12d |  |  |  | 328h |
| 58 | 1.3.2.1.1.1 | Detailed design of new code generation framework |  | 5d | 2007-02-27 | 2007-03-06 | 46 | 12d | 0d |  | Satish | 40h |
| 59 | 1.3.2.1.1.2 | Design Review/Update |  | 1d | 2007-03-06 | 2007-03-07 | 58 | 12d | 0d |  | Satish; Doug; Ye; Avinash | 32h |
| 60 | 1.3.2.1.1.3 | Implement new code generation framework |  | 3d | 2007-03-07 | 2007-03-12 | 59 | 12d | 0d |  | Satish | 24h |
| 61 | 1.3.2.1.1.4 | Rewrite bean generation for JDK 1.5 |  | 2d | 2007-03-12 | 2007-03-14 | 60 | 12d | 0d |  | Satish | 16h |
| 62 | 1.3.2.1.1.5 | Rewrite O/R mapping generation (.hbm.xml, .cfg.xml, ehcache.xml) |  | 10d | 2007-03-14 | 2007-03-28 | 61 | 12d | 0d |  | Satish | 80h |
| 63 | 1.3.2.1.1.6 | Implement class cache for JDK 1.5 |  | 4d | 2007-03-05 | 2007-03-09 | 47 | 16.75d | 0d |  | Dan | 32h |
| 64 | 1.3.2.1.1.7 | Rewrite XML schema generaotor |  | 2d | 2007-03-09 | 2007-03-13 | 63 | 16.75d | 0d |  | Dan | 16h |
| 65 | 1.3.2.1.1.8 | Rewrite XML mapping file generator |  | 2d | 2007-03-13 | 2007-03-15 | 64 | 16.75d | 0d |  | Dan | 16h |
| 66 | 1.3.2.1.1.9 | Supporting files generation (coreBeans.properties, DAOConfig.xml) |  | 5d | 2007-03-28 | 2007-04-04 | 62 | 12d | 0d |  | Satish | 40h |
| 67 | 1.3.2.1.1.10 | Change nestedCriteria to use JDK 1.5 beans |  | 2d | 2007-04-04 | 2007-04-06 | 63, 66 | 12d | 0d |  | Satish | 16h |
| 68 | 1.3.2.1.1.11 | Change CQL translator to use JDK 1.5 beans |  | 2d | 2007-04-06 | 2007-04-10 | 63, 67 | 12d | 0d |  | Satish | 16h |
| 69 | 1.3.2.1.2 | **QA** |  | 30d | 2007-03-06 | 2007-04-17 |  | 37d | 0d |  |  | 100h |
| 70 | 1.3.2.1.2.1 | Test Development |  | 5d | 2007-03-06 | 2007-03-13 | 58 | 93.5d |  | start no earlier than 2007-03-05 | Steve | 40h |
| 71 | 1.3.2.1.2.2 | Test Execution |  | 5d | 2007-04-10 | 2007-04-17 | 68 | 68.5d |  |  | Steve | 40h |
| 72 | 1.3.2.1.2.3 | Test Support |  | 2.5d | 2007-04-10 | 2007-04-12 | 68 | 12d |  |  | Satish | 20h |
| 73 | 1.3.2.1.3 | **Iteration Plan** |  | 1d | 2007-04-17 | 2007-04-18 |  | 68.5d |  |  |  | 24h |
| 74 | 1.3.2.1.3.1 | Review Client Feature Request/Revise Task Plan |  | 1d | 2007-04-17 | 2007-04-18 | 69 | 68.5d |  |  | Charles; Avinash; Satish | 24h |
| 75 | 1.3.3 | **Iteration 3** |  | 33.75d | 2007-03-15 | 2007-05-01 | 65 | 16.75d |  |  |  | 172h |
| 76 | 1.3.3.1 | **Release 4.0 Beta 1** |  | 17d | 2007-03-15 | 2007-04-09 |  | 16.75d |  |  |  | 148h |
| 77 | 1.3.3.1.1 | **Support multiple ApplicationService in same JVM** |  | 10d | 2007-03-15 | 2007-03-29 |  | 16.75d | 0d |  |  | 92h |
| 78 | 1.3.3.1.1.1 | Design |  | 3d | 2007-03-15 | 2007-03-20 | 38 | 16.75d | 0d | start no earlier than 2007-02-12 | Dan | 24h |
| 79 | 1.3.3.1.1.2 | Design Review |  | 0.5d | 2007-03-20 | 2007-03-20 | 78 | 16.75d | 0d |  | Satish; Kunal; Doug; Avinash | 16h |
| 80 | 1.3.3.1.1.3 | Design Update |  | 0.5d | 2007-03-20 | 2007-03-21 | 79 | 16.75d | 0d |  | Dan | 4h |
| 81 | 1.3.3.1.1.4 | Development/Unit Test |  | 6d | 2007-03-21 | 2007-03-29 | 80 | 16.75d |  |  | Dan | 48h |

| ID | WBS | Task | Type | Duration | Start | Finish | Predecessors | Total slack | Free slack | Constraint | Resources | Work |
| --- | --- | --- | --- | --- | --- | --- | --- | --- | --- | --- | --- | --- |
| 82 | 1.3.3.1.2 | **Use documentation in the Java docs (GF#1243) & Integrate JavaDocs in the web system** |  | 3.5d | 2007-03-29 | 2007-04-03 |  | 16.75d |  |  |  | 28h |
| 83 | 1.3.3.1.2.1 | Design |  | 0.5d | 2007-03-29 | 2007-03-29 | 77 | 16.75d | 0d |  | Dan | 4h |
| 84 | 1.3.3.1.2.2 | Development |  | 3d | 2007-03-29 | 2007-04-03 | 83 | 16.75d | 0d |  | Dan | 24h |
| 85 | 1.3.3.1.3 | **Improved logging/trace messages** |  | 2.5d | 2007-04-03 | 2007-04-06 |  | 16.75d | 0d |  |  | 20h |
| 86 | 1.3.3.1.3.1 | Development |  | 2.5d | 2007-04-03 | 2007-04-06 | 84 | 16.75d |  |  | Dan | 20h |
| 87 | 1.3.3.1.4 | Unrecognized database format for EA (GF#3955) |  | 0.5d | 2007-04-06 | 2007-04-06 | 85 | 75.75d | 0d |  | Dan | 4h |
| 88 | 1.3.3.1.5 | Build script change for downloading MySQL (GF#2933) |  | 0.5d | 2007-04-06 | 2007-04-09 | 87 | 75.75d |  |  | Dan | 4h |
| 89 | 1.3.3.2 | Release 4.0 Beta 1 Complete | milestone | 0d | 2007-05-01 | 2007-05-01 | 72, 85 | 0d |  | start no earlier than 2007-05-01 |  |  |
| 90 | 1.3.3.3 | Review Client Feature Request/Revise Task Plan |  | 1d | 2007-05-01 | 2007-05-01 | 89 | 59d |  |  | Charles; Avinash; Satish | 24h |
| 91 | 1.3.4 | **Iteration 5** |  | 21d? | 2007-05-01 | 2007-05-29 | 89 | 0d |  |  |  | 24h |
| 92 | 1.3.4.1 | Release 4.0 Beta 2 |  | 20d | 2007-05-01 | 2007-05-28 |  | 0d |  |  |  |  |
| 93 | 1.3.4.2 | Review Client Feature Request/Revise Task Plan |  | 1d? | 2007-05-29 | 2007-05-29 | 92 | 39d |  |  | Charles; Avinash; Satish | 24h |
| 94 | 1.3.5 | **Iteration 6** |  | 15d | 2007-05-29 | 2007-06-18 | 92 | 0d |  |  |  |  |
| 95 | 1.3.5.1 | Release 4.0 Final |  | 15d | 2007-05-29 | 2007-06-18 |  | 0d |  |  |  |  |
| 96 | 1.3.6 | Integration Test |  | 10d | 2007-06-19 | 2007-07-02 | 94 | 5d | 0d |  |  |  |
| 97 | 1.3.7 | UAT Test |  | 10d | 2007-07-03 | 2007-07-17 | 96 | 5d |  |  |  |  |
| 98 | 1.4 | **Transition** |  | 25d | 2007-06-19 | 2007-07-24 |  | 0d |  |  |  |  |
| 99 | 1.4.1 | **Documentation** |  | 25d | 2007-06-19 | 2007-07-24 | 94 | 0d |  |  |  |  |
| 100 | 1.4.1.1 | New users guide |  | 10d | 2007-06-19 | 2007-07-02 |  | 0d |  | start no earlier than 2007-06-15 |  |  |
| 101 | 1.4.1.2 | New technical guide |  | 10d | 2007-07-03 | 2007-07-17 | 100 | 0d |  | start no earlier than 2007-06-15 |  |  |
| 102 | 1.4.1.3 | How to example |  | 5d | 2007-07-18 | 2007-07-24 | 101 | 0d |  | start no earlier than 2007-06-15 |  |  |
| 103 | 1.4.2 | 4.0 Release Complete | milestone | 0d | 2007-07-24 | 2007-07-24 | 99 | 0d |  |  |  |  |
